# CCO_OY4_eCoachingLog_Schedule

Schedule from MS Project, 2016-04-12 to 2017-06-12, A marks actual dates.
Verizon Business

## Calendars

- Standard: Mon-Fri 08:00-12:00, 13:00-17:00; Sat-Sun off. Exceptions (off unless hours are given): 2016-05-30 (2016 Memorial Day), 2016-07-04 (2016 Independence Day), 2016-09-05 (2016 Labor Day), 2016-11-24 (2016 Thanksgiving Day), 2016-11-25 (2016 Thanksgiving Dat After), 2016-12-26 (2016 Christmas Day), 2017-01-02 (2017 New Years Day), 2017-05-29 (2017 Memorial Day).

## Resources

| Resource | Group | Rate |
| --- | --- | --- |
| Keith Luegering |  |  |
| Geils; Dean | W282304 - HCS_HS_CO_FHA-CDC | 88.61 |
| Palacherla; Susmitha C | W282305 - HCS_HS_CO_Health Engineering |  |
| Queen; Timothy K | W282305 - HCS_HS_CO_Health Engineering |  |
| Leferink; William J | W282305 - HCS_HS_CO_Health Engineering |  |
| Augustin; Jourdain M | W282304 - HCS_HS_CO_FHA-CDC |  |
| Foster; Mark S | W282318 - HCS_HS_CL_CCO Ops-Call-Ctr |  |
| Hinman; David L | W282305 - HCS_HS_CO_Health Engineering |  |
| Coughlin; Brian E | W282305 - HCS_HS_CO_Health Engineering |  |
| Tiongson; John Eric Z (NONUS) | W282318 - HCS_HS_CL_CCO Ops-Call-Ctr |  |
| Stearns; Douglas R | W282305 - HCS_HS_CO_Health Engineering |  |
| Szabo; Brian P | W282305 - HCS_HS_CO_Health Engineering |  |
| Black; Karen S | W282984 - HCS_HS_DC_Health_Operations |  |
| Haltmeyer; Jacqueline K | W282305 - HCS_HS_CO_Health Engineering |  |
| Treinen; Lola R | W282305 - HCS_HS_CO_Health Engineering | 93.79 |
| Project Manager |  |  |
| Process Auditor |  |  |
| HCSD Engineering Steering Committee |  |  |
| HCSD Process Engineering & Governance |  |  |
| Analyst |  |  |
| Architect |  |  |
| Developer |  |  |
| Stakeholder |  |  |
| Tester |  |  |
| Program Manager |  |  |
| Information System Security Officer |  |  |
| Configuration Management Lead |  |  |
| Configuration Control Board |  |  |
| Chief Information Security Officer |  |  |
| Customer |  |  |
| Team Member |  |  |
| Supplier Acquisition Manager |  |  |
| Reviewer |  |  |
| Peer Review Moderator |  |  |
| Huang; Lili | W282304 - HCS_HS_CO_FHA-CDC |  |
| Miller; Jackie K | W282305 - HCS_HS_CO_Health Engineering |  |
| Ingram Michael T | W282304 - HCS_HS_CO_FHA-CDC |  |

## Schedule

| ID | WBS | Task | Type | Duration | Start | Finish | Remaining | Total slack | Constraint | Resources | Work | Text8 |
| --- | --- | --- | --- | --- | --- | --- | --- | --- | --- | --- | --- | --- |
| 1 | 0 | **eCoaching Log - OY4** |  | 296.7d? | 2016-04-12 A | 2017-06-12 | 296.7d? | 0d |  |  | 85824h |  |
| 2 | 1.1 | **APL Maintenance Lifecycle** |  | 296.7d? | 2016-04-12 A | 2017-06-12 | 296.7d? | 0d |  |  | 85824h |  |
| 3 | 1.1.1 | **Maintenance Phase Iteration** |  | 296.7d? | 2016-04-12 A | 2017-06-12 | 296.7d? | 0d |  |  | 85824h |  |
| 4 | 1.1.1.1 | **Plan and Manage Iteration** |  | 288.7d | 2016-04-12 A | 2017-05-31 | 288.7d | 8d |  |  | 29016h |  |
| 5 | 1.1.1.1.1 | Plan Project | manual | 14d | 2016-05-02 | 2016-06-01 |  |  | start no earlier than 2016-05-02 | Stearns; Douglas R; Black; Karen S; Tiongson; John Eric Z (NONUS); Huang; Lili; Haltmeyer; Jacqueline K; Ingram Michael T | 672h | Version Manager Setup |
| 6 | 1.1.1.1.2 | Plan Iteration |  | 35.7d | 2016-04-12 | 2016-06-01 |  | 261d | finish no earlier than 2016-06-01 | Tiongson; John Eric Z (NONUS); Stearns; Douglas R; Ingram Michael T; Huang; Lili | 761.6h |  |
| 7 | 1.1.1.1.3 | Plan for Security Management |  | 172h | 2016-05-02 | 2016-06-01 |  | 261d | finish no earlier than 2016-06-01 | Tiongson; John Eric Z (NONUS); Szabo; Brian P | 344h |  |
| 8 | 1.1.1.1.4 | Plan Configuration Management |  | 19.8d | 2016-05-02 | 2016-06-01 |  | 261d | finish no earlier than 2016-06-01 | Miller; Jackie K; Ingram Michael T; Tiongson; John Eric Z (NONUS) | 294.4h |  |
| 9 | 1.1.1.1.5 | Process Residual Risk Letter |  | 22d | 2016-05-02 A | 2016-06-01 | 22d | 261d | finish no earlier than 2016-06-01 | Tiongson; John Eric Z (NONUS); Szabo; Brian P; Ingram Michael T | 528h |  |
| 10 | 1.1.1.1.6 | Manage Iterations | manual | 254d | 2016-06-01 | 2017-05-31 |  |  | start no earlier than 2016-06-01 | Stearns; Douglas R; Tiongson; John Eric Z (NONUS); Ingram Michael T; Huang; Lili | 8128h |  |
| 11 | 1.1.1.1.7 | Understand and Communicate Project Performance | manual | 254d | 2016-06-01 | 2017-05-31 |  |  | start no earlier than 2016-06-01 | Ingram Michael T; Tiongson; John Eric Z (NONUS); Huang; Lili | 6096h |  |
| 12 | 1.1.1.1.8 | Decision Analysis and Resolution | manual | 254d | 2016-06-01 | 2017-05-31 |  |  | start no earlier than 2016-06-01 | Ingram Michael T; Huang; Lili | 4064h |  |
| 13 | 1.1.1.1.9 | Assess Results | manual | 254d | 2016-06-01 | 2017-05-31 |  |  | start no earlier than 2016-06-01 | Stearns; Douglas R; Tiongson; John Eric Z (NONUS); Ingram Michael T; Huang; Lili | 8128h |  |
| 14 | 1.1.1.2 | **Maintenance Iteration 1** |  | 65d | 2016-06-01 | 2016-08-31 |  | 0d |  |  | 24272h |  |
| 15 | 1.1.1.2.1 | **Identify and Refine Requirements** |  | 65d | 2016-06-01 | 2016-08-31 |  | 0d |  |  | 5752h |  |
| 16 | 1.1.1.2.1.1 | Identify and Outline Requirements | manual | 31d | 2016-06-01 | 2016-08-31 |  |  | start no earlier than 2016-06-01 | Stearns; Douglas R; Tiongson; John Eric Z (NONUS); Huang; Lili; Palacherla; Susmitha C | 992h |  |
| 17 | 1.1.1.2.1.2 | Detail System-Wide Requirements | manual | 31d | 2016-06-01 | 2016-08-31 |  |  | start no earlier than 2016-06-01 | Stearns; Douglas R; Tiongson; John Eric Z (NONUS); Huang; Lili | 744h |  |
| 18 | 1.1.1.2.1.3 | Create, Review/Update Security Requirements | manual | 65d | 2016-06-01 | 2016-08-31 |  |  | start no earlier than 2016-06-01 | Stearns; Douglas R; Tiongson; John Eric Z (NONUS); Ingram Michael T; Huang; Lili; Szabo; Brian P; Palacherla; Susmitha C | 1760h |  |
| 19 | 1.1.1.2.1.4 | Create Test Cases | manual | 31d | 2016-06-01 | 2016-08-31 |  |  | start no earlier than 2016-06-01 | Stearns; Douglas R; Tiongson; John Eric Z (NONUS); Huang; Lili; Palacherla; Susmitha C | 992h |  |
| 20 | 1.1.1.2.1.5 | Review Test Activities for Security | manual | 65d | 2016-06-01 | 2016-08-31 |  |  | start no earlier than 2016-06-01 | Tiongson; John Eric Z (NONUS); Stearns; Douglas R; Ingram Michael T; Szabo; Brian P | 1264h |  |
| 21 | 1.1.1.2.2 | **Develop Solution Increment** |  | 65d | 2016-06-01 | 2016-08-31 |  | 0d |  |  | 12792h |  |
| 22 | 1.1.1.2.2.1 | Design the Solution | manual | 31d | 2016-06-01 | 2016-08-31 |  |  | start no earlier than 2016-06-01 | Stearns; Douglas R; Tiongson; John Eric Z (NONUS); Palacherla; Susmitha C; Huang; Lili | 992h |  |
| 23 | 1.1.1.2.2.2 | Decision Analysis and Resolution | manual | 65d | 2016-06-01 | 2016-08-31 |  |  | start no earlier than 2016-06-01 | Ingram Michael T; Palacherla; Susmitha C | 768h |  |
| 24 | 1.1.1.2.2.3 | Create, Review/Update Security Requirements | manual | 65d | 2016-06-01 | 2016-08-31 |  |  | start no earlier than 2016-06-01 | Stearns; Douglas R; Tiongson; John Eric Z (NONUS); Ingram Michael T; Szabo; Brian P; Huang; Lili; Palacherla; Susmitha C | 1760h |  |
| 25 | 1.1.1.2.2.4 | Create Developer Tests | manual | 31d | 2016-06-01 | 2016-08-31 |  |  | start no earlier than 2016-06-01 | Huang; Lili; Palacherla; Susmitha C; Tiongson; John Eric Z (NONUS); Stearns; Douglas R | 992h |  |
| 26 | 1.1.1.2.2.5 | Develop Solution | manual | 31d | 2016-06-01 | 2016-08-31 |  |  | start no earlier than 2016-06-01 | Huang; Lili; Palacherla; Susmitha C; Tiongson; John Eric Z (NONUS); Stearns; Douglas R | 992h |  |
| 27 | 1.1.1.2.2.6 | Run Developer Tests | manual | 31d | 2016-06-01 | 2016-08-31 |  |  | start no earlier than 2016-06-01 | Huang; Lili; Palacherla; Susmitha C; Tiongson; John Eric Z (NONUS) | 744h |  |
| 28 | 1.1.1.2.2.7 | Integrate and Create Build | manual | 65d | 2016-06-01 | 2016-08-31 |  |  | start no earlier than 2016-06-01 | Miller; Jackie K; Ingram Michael T; Tiongson; John Eric Z (NONUS); Huang; Lili; Palacherla; Susmitha C | 1512h |  |
| 29 | 1.1.1.2.2.8 | Evaluate Code for Security | manual | 65d | 2016-06-01 | 2016-08-31 |  |  | start no earlier than 2016-06-01 | Huang; Lili; Palacherla; Susmitha C; Szabo; Brian P; Tiongson; John Eric Z (NONUS); Ingram Michael T | 1512h |  |
| 30 | 1.1.1.2.2.9 | Evaluate Security Testing | manual | 65d | 2016-06-01 | 2016-08-31 |  |  | start no earlier than 2016-06-01 | Huang; Lili; Palacherla; Susmitha C; Szabo; Brian P; Ingram Michael T; Tiongson; John Eric Z (NONUS); Stearns; Douglas R | 1760h |  |
| 31 | 1.1.1.2.2.10 | Verify Operations Security | manual | 65d | 2016-06-01 | 2016-08-31 |  |  | start no earlier than 2016-06-01 | Huang; Lili; Palacherla; Susmitha C; Szabo; Brian P; Ingram Michael T; Tiongson; John Eric Z (NONUS); Stearns; Douglas R | 1760h |  |

Notes:
- 2: Text7: Evolve to continuously obtain feedback and improve, Iteration Lifecycle
- 4: Text1: Configuration Management Plan Standard, Risk Register Standard, Work Items List Standard, Work Items List, [Technical Specification], Risk Register, Iteration Plan, Configuration Management Plan, [Meeting and Review Records] / Text4: Application Security Risk & Requirements, Application Threat Modeling, Current Internal And External Security Policies, Standards And Procedures , Security Certification, Applications Service Providers Response for Security Requirements , Project Plan
- 5: A collaborative task that outlines an initial agreement on how the project will achieve its goals. The resulting project plan provides a summary-level overview of the project. / Text2: Project Plan Standard, Work Items List Standard, [Customer Requirements], APL Compliant Policy, Measurement Definitions Standard, Risk Register Standard, Work Items List, Work Breakdown Structure, [Process Assets], [Project Risk] / Text3: Project Plan, [Meeting and Review Records], Tailoring and Planning Worksheet, Work Items List, Process Waiver, Work Breakdown Structure, Life Cycle Selection, Traceability Matrix, Test Plan (optional), Measurement Definitions, Risk Register / Text7: Phase Milestones, Staffing a Project, Forming Teams, Deploy the Solution, Standard Work Environment, , Risk Management Guide, Process Automation Lab, Tool Request Process, Current Tool Licenses, Tools Administrators, Tools Support Model, Subversion Setup
- 6: Plan the scope and responsibilities for a single iteration. / Text2: Risk Register Standard, Work Items List Standard, [Customer Requirements], [Project Risk], [Project Plan], [Project Work], Test Plan (optional), APL Compliant Policy, [Technical Architecture], [Technical Specification], Lessons Learned / Text3: Risk Register, Work Items List, [Meeting and Review Records], Work Breakdown Structure, Iteration Plan, Test Plan (optional) / Text7: Agile Estimation, Assign Changes to an Iteration, Managing Risks, [Project Planning Guidance], Iteration Planning, Prioritizing Work Items, Deploy the Solution,
- 7: Identify and plan for security risks and requirements / Text2: Application Security Risk & Requirements, Application Threat Modeling, Current Internal And External Security Policies, Standards And Procedures , Security Certification, Project Plan Standard, APL Compliant Policy, Project Plan / Text3: Project Plan, System Security Plan / Text7: Relevant Stakeholders, Guide for Applying the Risk Management Framework to Federal Information Systems: A Security Life Cycle Approach (SP 800-37), Guide for Developing Security Plans for Federal Information Systems (SP 800-18)
- 8: Plan how configuration management will be performed on the project. / Text2: Configuration Management Plan Standard, APL Compliant Policy, CI/DI List Standard, [Measurements] / Text3: Configuration Management Plan, CI and DI List
- 9: Identify residual risks that remain in the system and obtain customer approval / Text2: Applications Service Providers Response for Security Requirements , Current Internal And External Security Policies, Standards And Procedures / Text3: Residual Risk Letter
- 10: Assess project status and identify any blocking issues and opportunities. Identify and manage exceptions, problems, and risks. Communicate project status. / Text2: Risk Register Standard, Work Items List Standard, Engineering Design Document, Work Breakdown Structure, [Measurements], [Project Risk], [Project Work], Test Plan (optional), Lessons Learned, Measurement Definitions / Text3: Risk Register, [Meeting and Review Records], Engineering Design Document, Lessons Learned, [Project Status], Test Plan (optional) / Text7: Metrics, Risk, Assign Changes to an Iteration, [Collaboration Guidance],
- 11: To collect, analyze and report on project performance using measurements / Text2: Project Plan, [Measurements], Measurement Definitions / Text3: [Meeting and Review Records], Risk Register, Work Items List, [Measurements], Lessons Learned / Text7: The Goal Question Metric Approach
- 12: A process to define and make key project decisions more objectively and wisely. / Text2: DAR Log Standard, APL Compliant Policy / Text3: Decision Log / Text7: Mind Mapping Best Practices, Team Track Training, TeamTrack Guides
- 13: Determine success or failure of the iteration. Apply the lessons learned to modify the project or improve the process. / Text2: Work Items List Standard, Traceability Matrix, Lessons Learned, [Project Status], Test Plan (optional), [Project Definition and Scope], [Technical Specification], [Technical Test Results], Measurement Definitions, [Measurements] / Text3: Iteration Plan, Work Items List, Self Assessment Survey (optional), Process Improvements List, Traceability Matrix, Lessons Learned / Text7: Retrospective, Phase Milestones, Conduct Project Retrospective, , Deploy the Solution
- 15: Text1: System Wide Requirements Standard, [Technical Specification], Glossary (Optional), System Wide Requirements, Use Case Specification, Requirements Model, Traceability Matrix, Application Security Risk & Requirements, Application Threat Modeling / Text4: Current Internal And External Security Policies, Standards And Procedures , System-Wide Requirements, Use Case Specification, Requirements Model, Acceptable Risks and Safeguards Audit Spreadsheet , Test Information Standard, Test Information
- 16: This task describes how to identify and outline the requirements for the system so that the scope of work may be determined. / Text2: System Wide Requirements Standard, [Customer Requirements], [Technical Specification] / Text3: Glossary (Optional), System Wide Requirements, Use Case Specification, Use Case Survey (Optional), Requirements Model / Text7: Requirements, System-Wide Requirements, Identify and Outline Actors and Use Cases, Developing System-Wide Requirements Specification, Effective Requirement Reviews, Requirements Gathering Techniques, Dimensions RM Training, Dimensions RM Guides
- 17: This task details one or more requirement that does not apply to a specific use case. / Text2: System Wide Requirements Standard, System Wide Requirements, [Customer Requirements], Use Case Specification, Traceability Matrix / Text3: Glossary (Optional), System Wide Requirements, Traceability Matrix / Text7: Effective Requirement Reviews, Developing System-Wide Requirements Specification, Dimensions RM Training, Dimensions RM Guides
- 18: Identify the security risks and requirements and ensure they are documented appropriately. / Text2: Application Security Risk & Requirements, Application Threat Modeling, Current Internal And External Security Policies, Standards And Procedures / Text3: Application Security Risk & Requirements, Application Threat Modeling, System-Wide Requirements, Use Case Specification, Requirements Model, Acceptable Risks and Safeguards Audit Spreadsheet / Text7: Relevant Stakeholders, Security Risk Assessment Procedure, Dimensions RM Training, Dimensions RM Guides
- 19: Develop the test cases and test data for the requirements to be tested. / Text2: Test Information Standard, [Technical Specification], Traceability Matrix, Test Plan (optional), Test Information / Text3: Test Information, Traceability Matrix, Test Plan (optional) / Text7: Test Ideas, HP LoadRunner Training, HP LoadRunner Guides, HP Quality Center Training, HP Quality Center Guides, HP Quick Test Pro Training, HP Quick Test Pro Guides
- 20: Support the assessment of the system implementation against its requirements / Text2: Current Internal And External Security Policies, Standards And Procedures / Text3: [Meeting and Review Records]
- 21: Text1: [Technical Architecture], [Technical Specification], Design, [Software Implementation], [Software Design], Developer Test, Implementation, Test Log, Build, Design Standard, Application Security Risk & Requirements / Text4: Current Internal And External Security Policies, Standards And Procedures , Application Threat Modeling, Current Internal And External Security Policies, Standards And Procedures , Secure C++ Code, Secure Coding, Secure Java Code, System-Wide Requirements
- 22: Identify the elements and devise the interactions, behavior, relations, and data necessary to realize some functionality. Render the design visually to aid in solving the problem and communicating the solution. / Text2: [Technical Architecture], [Technical Specification], Design Standard, Traceability Matrix, Design / Text3: Design, Traceability Matrix / Text7: Architectural Mechanism, Design Mechanism, Implementation Mechanism, Pattern, Design, Requirements Realization, Software Reuse, Entity-Control-Boundary Pattern, Analyze the Design, Evolve the Design, [Design Guidance]
- 23: A process to define and make key project decisions more objectively and wisely. / Text2: DAR Log Standard, APL Compliant Policy / Text3: Decision Log / Text7: Mind Mapping Best Practices, Team Track Training, TeamTrack Guides
- 24: Identify the security risks and requirements and ensure they are documented appropriately. / Text2: Application Security Risk & Requirements, Application Threat Modeling, Current Internal And External Security Policies, Standards And Procedures / Text3: Application Security Risk & Requirements, Application Threat Modeling, System-Wide Requirements, Use Case Specification, Requirements Model, Acceptable Risks and Safeguards Audit Spreadsheet / Text7: Relevant Stakeholders, Security Risk Assessment Procedure, Dimensions RM Training, Dimensions RM Guides
- 25: Implement one or more tests that enable the validation of the individual implementation elements through execution. / Text2: [Software Implementation], Traceability Matrix, [Software Design] / Text3: Developer Test, Traceability Matrix / Text7: Developer Testing, Test Driven Development
- 26: Implement source code to provide new functionality or fix defects. / Text2: [Software Design], [Technical Specification], Traceability Matrix, Developer Test, [Software Implementation] / Text3: Implementation, Traceability Matrix / Text7: Refactoring, Mapping from Design to Code
- 27: Run tests against the individual implementation elements to verify that their internal structures work as specified. / Text2: Developer Test, [Software Implementation] / Text3: Test Log / Text7: Developer Testing, HP LoadRunner Training, HP LoadRunner Guides, HP Quality Center Training, HP Quality Center Guides, HP Quick Test Pro Training, HP Quick Test Pro Guides
- 28: This task describes how to integrate all changes made by developers into the code base and perform the minimal testing to validate the build. / Text2: [Software Implementation], Developer Test, Test Log / Text3: Build, Test Log / Text7: Change Set, Workspace, Promoting Changes, , Software Release Management Gold Disk SOP
- 29: Support the assessment of the system implementation against its requirements and within its modeled operational environment by identifying and eliminating source code vulnerabilities. / Text2: Current Internal And External Security Policies, Standards And Procedures , Secure C++ Code, Secure Coding, Secure Java Code, Secure C# and VB.NET Development
- 30: Support the assessment of the system implementation against its requirements and within its modeled operational environment by ensuring the test results sufficiently cover all testable security requirements. / Text2: Current Internal And External Security Policies, Standards And Procedures
- 31: Verify that system security features are configured, enabled, tested, and verified. / Text2: Application Security Risk & Requirements, Current Internal And External Security Policies, Standards And Procedures / Text3: [Meeting and Review Records]

| ID | WBS | Task | Type | Duration | Start | Finish | Total slack | Constraint | Resources | Work |
| --- | --- | --- | --- | --- | --- | --- | --- | --- | --- | --- |
| 32 | 1.1.1.2.3 | **Test Solution** |  | 65d | 2016-06-01 | 2016-08-31 | 0d |  |  | 5728h |
| 33 | 1.1.1.2.3.1 | Implement Tests (optional) | manual | 31d | 2016-06-01 | 2016-08-31 |  | start no earlier than 2016-06-01 | Stearns; Douglas R; Tiongson; John Eric Z (NONUS); Palacherla; Susmitha C; Huang; Lili | 992h |
| 34 | 1.1.1.2.3.2 | Run Tests | manual | 31d | 2016-06-01 | 2016-08-31 |  | start no earlier than 2016-06-01 | Tester; Team Member | 496h |
| 35 | 1.1.1.2.3.3 | Evaluate Security Testing | manual | 31d | 2016-06-01 | 2016-08-31 |  | start no earlier than 2016-06-01 | Project Manager; Stakeholder; Supplier Acquisition Manager; Tester; Huang; Lili; Palacherla; Susmitha C | 1488h |
| 36 | 1.1.1.2.3.4 | Peer Review Selected Work Products | manual | 31d | 2016-06-01 | 2016-08-31 |  | start no earlier than 2016-06-01 | Augustin; Jourdain M | 248h |
| 37 | 1.1.1.2.3.5 | Customer Acceptance Testing | manual | 31d | 2016-06-01 | 2016-08-31 |  | start no earlier than 2016-06-01 | Tiongson; John Eric Z (NONUS); Stearns; Douglas R; Palacherla; Susmitha C; Huang; Lili | 992h |
| 38 | 1.1.1.2.3.6 | **Formal Peer Review (Optional)** |  | 65d | 2016-06-01 | 2016-08-31 | 0d |  |  | 1512h |
| 39 | 1.1.1.2.3.6.1 | Plan for Formal Peer Reviews (optional) | manual | 21d | 2016-06-01 | 2016-08-31 |  | start no earlier than 2016-06-01 | Peer Review Moderator; Team Member; Reviewer | 504h |
| 40 | 1.1.1.2.3.6.2 | Conduct Formal Peer Reviews (optional) | manual | 21d | 2016-06-01 | 2016-08-31 |  | start no earlier than 2016-06-01 | Peer Review Moderator; Reviewer; Team Member | 504h |
| 41 | 1.1.1.2.3.6.3 | Follow-up on Formal Peer Review Results (optional) | manual | 21d | 2016-06-01 | 2016-08-31 |  | start no earlier than 2016-06-01 | Peer Review Moderator; Project Manager; Team Member | 504h |
| 42 | 1.1.1.3 | **Maintenance Iteration 2** |  | 62d | 2016-09-01 | 2016-11-30 | 0d |  |  | 3968h |
| 43 | 1.1.1.3.1 | **Identify and Refine Requirements** |  | 62d | 2016-09-01 | 2016-11-30 | 0d |  |  | 992h |
| 44 | 1.1.1.3.1.1 | Identify and Outline Requirements | milestone, manual | 0d | 2016-09-01 | 2016-11-30 |  | start no earlier than 2016-09-01 | Stearns; Douglas R; Tiongson; John Eric Z (NONUS); Huang; Lili; Palacherla; Susmitha C |  |
| 45 | 1.1.1.3.1.2 | Detail System-Wide Requirements | milestone, manual | 0d | 2016-09-01 | 2016-11-30 |  | start no earlier than 2016-09-01 | Stearns; Douglas R; Tiongson; John Eric Z (NONUS); Huang; Lili |  |
| 46 | 1.1.1.3.1.3 | Create, Review/Update Security Requirements | manual | 62d | 2016-09-01 | 2016-11-30 |  | start no earlier than 2016-09-01 | Stearns; Douglas R; Tiongson; John Eric Z (NONUS); Ingram Michael T; Huang; Lili; Szabo; Brian P; Palacherla; Susmitha C | 496h |
| 47 | 1.1.1.3.1.4 | Create Test Cases | milestone, manual | 0d | 2016-09-01 | 2016-11-30 |  | start no earlier than 2016-09-01 | Stearns; Douglas R; Tiongson; John Eric Z (NONUS); Huang; Lili; Palacherla; Susmitha C |  |
| 48 | 1.1.1.3.1.5 | Review Test Activities for Security | manual | 62d | 2016-09-01 | 2016-11-30 |  | start no earlier than 2016-09-01 | Tiongson; John Eric Z (NONUS); Stearns; Douglas R; Ingram Michael T; Szabo; Brian P | 496h |
| 49 | 1.1.1.3.2 | **Develop Solution Increment** |  | 62d | 2016-09-01 | 2016-11-30 | 0d |  |  | 2976h |
| 50 | 1.1.1.3.2.1 | Design the Solution | milestone, manual | 0d | 2016-09-01 | 2016-11-30 |  | start no earlier than 2016-09-01 | Stearns; Douglas R; Tiongson; John Eric Z (NONUS); Palacherla; Susmitha C; Huang; Lili |  |
| 51 | 1.1.1.3.2.2 | Decision Analysis and Resolution | manual | 62d | 2016-09-01 | 2016-11-30 |  | start no earlier than 2016-09-01 | Ingram Michael T; Palacherla; Susmitha C | 496h |
| 52 | 1.1.1.3.2.3 | Create, Review/Update Security Requirements | manual | 62d | 2016-09-01 | 2016-11-30 |  | start no earlier than 2016-09-01 | Stearns; Douglas R; Tiongson; John Eric Z (NONUS); Ingram Michael T; Szabo; Brian P; Huang; Lili; Palacherla; Susmitha C | 496h |
| 53 | 1.1.1.3.2.4 | Create Developer Tests | milestone, manual | 0d | 2016-09-01 | 2016-11-30 |  | start no earlier than 2016-09-01 | Huang; Lili; Palacherla; Susmitha C; Tiongson; John Eric Z (NONUS); Stearns; Douglas R |  |
| 54 | 1.1.1.3.2.5 | Develop Solution | milestone, manual | 0d | 2016-09-01 | 2016-11-30 |  | start no earlier than 2016-09-01 | Huang; Lili; Palacherla; Susmitha C; Tiongson; John Eric Z (NONUS); Stearns; Douglas R |  |
| 55 | 1.1.1.3.2.6 | Run Developer Tests | milestone, manual | 0d | 2016-09-01 | 2016-11-30 |  | start no earlier than 2016-09-01 | Huang; Lili; Palacherla; Susmitha C; Tiongson; John Eric Z (NONUS) |  |
| 56 | 1.1.1.3.2.7 | Integrate and Create Build | manual | 62d | 2016-09-01 | 2016-11-30 |  | start no earlier than 2016-09-01 | Miller; Jackie K; Ingram Michael T; Tiongson; John Eric Z (NONUS); Huang; Lili; Palacherla; Susmitha C | 496h |
| 57 | 1.1.1.3.2.8 | Evaluate Code for Security | manual | 62d | 2016-09-01 | 2016-11-30 |  | start no earlier than 2016-09-01 | Huang; Lili; Palacherla; Susmitha C; Szabo; Brian P; Tiongson; John Eric Z (NONUS); Ingram Michael T | 496h |
| 58 | 1.1.1.3.2.9 | Evaluate Security Testing | manual | 62d | 2016-09-01 | 2016-11-30 |  | start no earlier than 2016-09-01 | Huang; Lili; Palacherla; Susmitha C; Szabo; Brian P; Ingram Michael T; Tiongson; John Eric Z (NONUS); Stearns; Douglas R | 496h |
| 59 | 1.1.1.3.2.10 | Verify Operations Security | manual | 62d | 2016-09-01 | 2016-11-30 |  | start no earlier than 2016-09-01 | Huang; Lili; Palacherla; Susmitha C; Szabo; Brian P; Ingram Michael T; Tiongson; John Eric Z (NONUS); Stearns; Douglas R | 496h |

Notes:
- 32: Text1: Test Information Standard, Test Information, [Software Implementation], Current Internal And External Security Policies, Standards And Procedures , Peer Review Results, Change Request / Problem Report, [Project Work], Peer Review Meeting Package / Text4: Peer Review Meeting Package (Optional), Test Plan (optional), Measurement Definitions, System Security Plan
- 33: Implement Test Scripts to validate a Build of the solution. Organize Test Scripts into suites, and collaborate to ensure appropriate depth and breadth of test feedback. / Text2: Test Information Standard, Test Information, Test Plan (optional), [Software Implementation] / Text3: Test Information, Test Plan (optional) / Text7: Test Ideas, Maintaining Automated Test Suites, Programming Automated Tests, Test Ideas, HP LoadRunner Training, HP LoadRunner Guides, HP Quality Center Training, HP Quality Center Guides, HP Quick Test Pro Training, HP Quick Test Pro Guides
- 34: Run the appropriate tests scripts, analyze results, articulate issues, and communicate test results to the team. / Text2: Test Information Standard, [Software Implementation], Test Information, Test Plan (optional) / Text3: Test Information, Test Plan (optional) / Text7: Maintaining Automated Test Suites, Programming Automated Tests, Test Suite, HP LoadRunner Training, HP LoadRunner Guides, HP Quality Center Training, HP Quality Center Guides, HP Quick Test Pro Training, HP Quick Test Pro Guides
- 35: Support the assessment of the system implementation against its requirements and within its modeled operational environment by ensuring the test results sufficiently cover all testable security requirements. / Text2: Current Internal And External Security Policies, Standards And Procedures
- 36: This process is used to remove defects from artifacts early in the lifecycle / Text2: [Project Work], Peer Review Meeting Package / Text3: Peer Review Results, Peer Review Meeting Package (Optional) / Text7: HP LoadRunner Training, HP LoadRunner Guides, HP Quality Center Training, HP Quality Center Guides, HP Quick Test Pro Training, HP Quick Test Pro Guides
- 37: To verify system works according to requirements, and to officially accept the system. Customer sign-off takes place during this test. / Text2: Test Plan (optional), Test Information / Text3: Test Information, Test Plan (optional) / Text7: HP LoadRunner Training, HP LoadRunner Guides, HP Quality Center Training, HP Quality Center Guides, HP Quick Test Pro Training, HP Quick Test Pro Guides
- 38: Text1: [Project Work], Peer Review Meeting Package, Peer Review Results, Measurement Definitions, System Security Plan
- 39: The moderator plans for the peer review meeting / Text2: [Project Work] / Text3: Peer Review Meeting Package / Text7: Formal Peer Review Effort Estimation Guideline
- 40: The moderator, author and reviewers prepare for the peer review and the moderator conducts the peer review. / Text2: Peer Review Meeting Package, [Project Work] / Text3: Peer Review Meeting Package / Text7: Conducting Group Reviews, Performing Individual Reviews
- 41: Any rework from defects and action items identified in the peer review meeting are resolved and the measurements are recorded. / Text2: Peer Review Meeting Package, [Project Work] / Text3: Peer Review Results
- 43: Text1: System Wide Requirements Standard, [Technical Specification], Glossary (Optional), System Wide Requirements, Use Case Specification, Requirements Model, Traceability Matrix, Application Security Risk & Requirements, Application Threat Modeling / Text4: Current Internal And External Security Policies, Standards And Procedures , System-Wide Requirements, Use Case Specification, Requirements Model, Acceptable Risks and Safeguards Audit Spreadsheet , Test Information Standard, Test Information
- 44: This task describes how to identify and outline the requirements for the system so that the scope of work may be determined. / Text2: System Wide Requirements Standard, [Customer Requirements], [Technical Specification] / Text3: Glossary (Optional), System Wide Requirements, Use Case Specification, Use Case Survey (Optional), Requirements Model / Text7: Requirements, System-Wide Requirements, Identify and Outline Actors and Use Cases, Developing System-Wide Requirements Specification, Effective Requirement Reviews, Requirements Gathering Techniques, Dimensions RM Training, Dimensions RM Guides
- 45: This task details one or more requirement that does not apply to a specific use case. / Text2: System Wide Requirements Standard, System Wide Requirements, [Customer Requirements], Use Case Specification, Traceability Matrix / Text3: Glossary (Optional), System Wide Requirements, Traceability Matrix / Text7: Effective Requirement Reviews, Developing System-Wide Requirements Specification, Dimensions RM Training, Dimensions RM Guides
- 46: Identify the security risks and requirements and ensure they are documented appropriately. / Text2: Application Security Risk & Requirements, Application Threat Modeling, Current Internal And External Security Policies, Standards And Procedures / Text3: Application Security Risk & Requirements, Application Threat Modeling, System-Wide Requirements, Use Case Specification, Requirements Model, Acceptable Risks and Safeguards Audit Spreadsheet / Text7: Relevant Stakeholders, Security Risk Assessment Procedure, Dimensions RM Training, Dimensions RM Guides
- 47: Develop the test cases and test data for the requirements to be tested. / Text2: Test Information Standard, [Technical Specification], Traceability Matrix, Test Plan (optional), Test Information / Text3: Test Information, Traceability Matrix, Test Plan (optional) / Text7: Test Ideas, HP LoadRunner Training, HP LoadRunner Guides, HP Quality Center Training, HP Quality Center Guides, HP Quick Test Pro Training, HP Quick Test Pro Guides
- 48: Support the assessment of the system implementation against its requirements / Text2: Current Internal And External Security Policies, Standards And Procedures / Text3: [Meeting and Review Records]
- 49: Text1: [Technical Architecture], [Technical Specification], Design, [Software Implementation], [Software Design], Developer Test, Implementation, Test Log, Build, Design Standard, Application Security Risk & Requirements / Text4: Current Internal And External Security Policies, Standards And Procedures , Application Threat Modeling, Current Internal And External Security Policies, Standards And Procedures , Secure C++ Code, Secure Coding, Secure Java Code, System-Wide Requirements
- 50: Identify the elements and devise the interactions, behavior, relations, and data necessary to realize some functionality. Render the design visually to aid in solving the problem and communicating the solution. / Text2: [Technical Architecture], [Technical Specification], Design Standard, Traceability Matrix, Design / Text3: Design, Traceability Matrix / Text7: Architectural Mechanism, Design Mechanism, Implementation Mechanism, Pattern, Design, Requirements Realization, Software Reuse, Entity-Control-Boundary Pattern, Analyze the Design, Evolve the Design, [Design Guidance]
- 51: A process to define and make key project decisions more objectively and wisely. / Text2: DAR Log Standard, APL Compliant Policy / Text3: Decision Log / Text7: Mind Mapping Best Practices, Team Track Training, TeamTrack Guides
- 52: Identify the security risks and requirements and ensure they are documented appropriately. / Text2: Application Security Risk & Requirements, Application Threat Modeling, Current Internal And External Security Policies, Standards And Procedures / Text3: Application Security Risk & Requirements, Application Threat Modeling, System-Wide Requirements, Use Case Specification, Requirements Model, Acceptable Risks and Safeguards Audit Spreadsheet / Text7: Relevant Stakeholders, Security Risk Assessment Procedure, Dimensions RM Training, Dimensions RM Guides
- 53: Implement one or more tests that enable the validation of the individual implementation elements through execution. / Text2: [Software Implementation], Traceability Matrix, [Software Design] / Text3: Developer Test, Traceability Matrix / Text7: Developer Testing, Test Driven Development
- 54: Implement source code to provide new functionality or fix defects. / Text2: [Software Design], [Technical Specification], Traceability Matrix, Developer Test, [Software Implementation] / Text3: Implementation, Traceability Matrix / Text7: Refactoring, Mapping from Design to Code
- 55: Run tests against the individual implementation elements to verify that their internal structures work as specified. / Text2: Developer Test, [Software Implementation] / Text3: Test Log / Text7: Developer Testing, HP LoadRunner Training, HP LoadRunner Guides, HP Quality Center Training, HP Quality Center Guides, HP Quick Test Pro Training, HP Quick Test Pro Guides
- 56: This task describes how to integrate all changes made by developers into the code base and perform the minimal testing to validate the build. / Text2: [Software Implementation], Developer Test, Test Log / Text3: Build, Test Log / Text7: Change Set, Workspace, Promoting Changes, , Software Release Management Gold Disk SOP
- 57: Support the assessment of the system implementation against its requirements and within its modeled operational environment by identifying and eliminating source code vulnerabilities. / Text2: Current Internal And External Security Policies, Standards And Procedures , Secure C++ Code, Secure Coding, Secure Java Code, Secure C# and VB.NET Development
- 58: Support the assessment of the system implementation against its requirements and within its modeled operational environment by ensuring the test results sufficiently cover all testable security requirements. / Text2: Current Internal And External Security Policies, Standards And Procedures
- 59: Verify that system security features are configured, enabled, tested, and verified. / Text2: Application Security Risk & Requirements, Current Internal And External Security Policies, Standards And Procedures / Text3: [Meeting and Review Records]

| ID | WBS | Task | Type | Duration | Start | Finish | Total slack | Constraint | Resources | Work |
| --- | --- | --- | --- | --- | --- | --- | --- | --- | --- | --- |
| 60 | 1.1.1.3.3 | **Test Solution** |  | 62d | 2016-09-01 | 2016-11-30 | 0d |  |  |  |
| 61 | 1.1.1.3.3.1 | Implement Tests (optional) | milestone, manual | 0d | 2016-09-01 | 2016-11-30 |  | start no earlier than 2016-09-01 | Stearns; Douglas R; Tiongson; John Eric Z (NONUS); Palacherla; Susmitha C; Huang; Lili |  |
| 62 | 1.1.1.3.3.2 | Run Tests | milestone, manual | 0d | 2016-09-01 | 2016-11-30 |  | start no earlier than 2016-09-01 | Tester; Team Member |  |
| 63 | 1.1.1.3.3.3 | Evaluate Security Testing | milestone, manual | 0d | 2016-09-01 | 2016-11-30 |  | start no earlier than 2016-09-01 | Project Manager; Stakeholder; Supplier Acquisition Manager; Tester; Huang; Lili; Palacherla; Susmitha C |  |
| 64 | 1.1.1.3.3.4 | Peer Review Selected Work Products | milestone, manual | 0d | 2016-09-01 | 2016-11-30 |  | start no earlier than 2016-09-01 | Augustin; Jourdain M |  |
| 65 | 1.1.1.3.3.5 | Customer Acceptance Testing | milestone, manual | 0d | 2016-09-01 | 2016-11-30 |  | start no earlier than 2016-09-01 | Tiongson; John Eric Z (NONUS); Stearns; Douglas R; Palacherla; Susmitha C; Huang; Lili |  |
| 66 | 1.1.1.3.3.6 | **Formal Peer Review (Optional)** |  | 62d | 2016-09-01 | 2016-11-30 | 0d |  |  |  |
| 67 | 1.1.1.3.3.6.1 | Plan for Formal Peer Reviews (optional) | milestone, manual | 0d | 2016-09-01 | 2016-11-30 |  | start no earlier than 2016-09-01 | Peer Review Moderator; Team Member; Reviewer |  |
| 68 | 1.1.1.3.3.6.2 | Conduct Formal Peer Reviews (optional) | milestone, manual | 0d | 2016-09-01 | 2016-11-30 |  | start no earlier than 2016-09-01 | Peer Review Moderator; Reviewer; Team Member |  |
| 69 | 1.1.1.3.3.6.3 | Follow-up on Formal Peer Review Results (optional) | milestone, manual | 0d | 2016-09-01 | 2016-11-30 |  | start no earlier than 2016-09-01 | Peer Review Moderator; Project Manager; Team Member |  |
| 70 | 1.1.1.4 | **Maintenance Iteration 3** |  | 62d | 2016-12-01 | 2017-02-28 | 0d |  |  | 3968h |
| 71 | 1.1.1.4.1 | **Identify and Refine Requirements** |  | 62d | 2016-12-01 | 2017-02-28 | 0d |  |  | 992h |
| 72 | 1.1.1.4.1.1 | Identify and Outline Requirements | milestone, manual | 0d | 2016-12-01 | 2017-02-28 |  | start no earlier than 2016-12-01 | Stearns; Douglas R; Tiongson; John Eric Z (NONUS); Huang; Lili; Palacherla; Susmitha C |  |
| 73 | 1.1.1.4.1.2 | Detail System-Wide Requirements | milestone, manual | 0d | 2016-12-01 | 2017-02-28 |  | start no earlier than 2016-12-01 | Stearns; Douglas R; Tiongson; John Eric Z (NONUS); Huang; Lili |  |
| 74 | 1.1.1.4.1.3 | Create, Review/Update Security Requirements | manual | 62d | 2016-12-01 | 2017-02-28 |  | start no earlier than 2016-12-01 | Stearns; Douglas R; Tiongson; John Eric Z (NONUS); Ingram Michael T; Huang; Lili; Szabo; Brian P; Palacherla; Susmitha C | 496h |
| 75 | 1.1.1.4.1.4 | Create Test Cases | milestone, manual | 0d | 2016-12-01 | 2017-02-28 |  | start no earlier than 2016-12-01 | Stearns; Douglas R; Tiongson; John Eric Z (NONUS); Huang; Lili; Palacherla; Susmitha C |  |
| 76 | 1.1.1.4.1.5 | Review Test Activities for Security | manual | 62d | 2016-12-01 | 2017-02-28 |  | start no earlier than 2016-12-01 | Tiongson; John Eric Z (NONUS); Stearns; Douglas R; Ingram Michael T; Szabo; Brian P | 496h |
| 77 | 1.1.1.4.2 | **Develop Solution Increment** |  | 62d | 2016-12-01 | 2017-02-28 | 0d |  |  | 2976h |
| 78 | 1.1.1.4.2.1 | Design the Solution | milestone, manual | 0d | 2016-12-01 | 2017-02-28 |  | start no earlier than 2016-12-01 | Stearns; Douglas R; Tiongson; John Eric Z (NONUS); Palacherla; Susmitha C; Huang; Lili |  |
| 79 | 1.1.1.4.2.2 | Decision Analysis and Resolution | manual | 62d | 2016-12-01 | 2017-02-28 |  | start no earlier than 2016-12-01 | Ingram Michael T; Palacherla; Susmitha C | 496h |
| 80 | 1.1.1.4.2.3 | Create, Review/Update Security Requirements | manual | 62d | 2016-12-01 | 2017-02-28 |  | start no earlier than 2016-12-01 | Stearns; Douglas R; Tiongson; John Eric Z (NONUS); Ingram Michael T; Szabo; Brian P; Huang; Lili; Palacherla; Susmitha C | 496h |
| 81 | 1.1.1.4.2.4 | Create Developer Tests | milestone, manual | 0d | 2016-12-01 | 2017-02-28 |  | start no earlier than 2016-12-01 | Huang; Lili; Palacherla; Susmitha C; Tiongson; John Eric Z (NONUS); Stearns; Douglas R |  |
| 82 | 1.1.1.4.2.5 | Develop Solution | milestone, manual | 0d | 2016-12-01 | 2017-02-28 |  | start no earlier than 2016-12-01 | Huang; Lili; Palacherla; Susmitha C; Tiongson; John Eric Z (NONUS); Stearns; Douglas R |  |
| 83 | 1.1.1.4.2.6 | Run Developer Tests | milestone, manual | 0d | 2016-12-01 | 2017-02-28 |  | start no earlier than 2016-12-01 | Huang; Lili; Palacherla; Susmitha C; Tiongson; John Eric Z (NONUS) |  |
| 84 | 1.1.1.4.2.7 | Integrate and Create Build | manual | 62d | 2016-12-01 | 2017-02-28 |  | start no earlier than 2016-12-01 | Miller; Jackie K; Ingram Michael T; Tiongson; John Eric Z (NONUS); Huang; Lili; Palacherla; Susmitha C | 496h |
| 85 | 1.1.1.4.2.8 | Evaluate Code for Security | manual | 62d | 2016-12-01 | 2017-02-28 |  | start no earlier than 2016-12-01 | Huang; Lili; Palacherla; Susmitha C; Szabo; Brian P; Tiongson; John Eric Z (NONUS); Ingram Michael T | 496h |
| 86 | 1.1.1.4.2.9 | Evaluate Security Testing | manual | 62d | 2016-12-01 | 2017-02-28 |  | start no earlier than 2016-12-01 | Huang; Lili; Palacherla; Susmitha C; Szabo; Brian P; Ingram Michael T; Tiongson; John Eric Z (NONUS); Stearns; Douglas R | 496h |
| 87 | 1.1.1.4.2.10 | Verify Operations Security | manual | 62d | 2016-12-01 | 2017-02-28 |  | start no earlier than 2016-12-01 | Huang; Lili; Palacherla; Susmitha C; Szabo; Brian P; Ingram Michael T; Tiongson; John Eric Z (NONUS); Stearns; Douglas R | 496h |

Notes:
- 60: Text1: Test Information Standard, Test Information, [Software Implementation], Current Internal And External Security Policies, Standards And Procedures , Peer Review Results, Change Request / Problem Report, [Project Work], Peer Review Meeting Package / Text4: Peer Review Meeting Package (Optional), Test Plan (optional), Measurement Definitions, System Security Plan
- 61: Implement Test Scripts to validate a Build of the solution. Organize Test Scripts into suites, and collaborate to ensure appropriate depth and breadth of test feedback. / Text2: Test Information Standard, Test Information, Test Plan (optional), [Software Implementation] / Text3: Test Information, Test Plan (optional) / Text7: Test Ideas, Maintaining Automated Test Suites, Programming Automated Tests, Test Ideas, HP LoadRunner Training, HP LoadRunner Guides, HP Quality Center Training, HP Quality Center Guides, HP Quick Test Pro Training, HP Quick Test Pro Guides
- 62: Run the appropriate tests scripts, analyze results, articulate issues, and communicate test results to the team. / Text2: Test Information Standard, [Software Implementation], Test Information, Test Plan (optional) / Text3: Test Information, Test Plan (optional) / Text7: Maintaining Automated Test Suites, Programming Automated Tests, Test Suite, HP LoadRunner Training, HP LoadRunner Guides, HP Quality Center Training, HP Quality Center Guides, HP Quick Test Pro Training, HP Quick Test Pro Guides
- 63: Support the assessment of the system implementation against its requirements and within its modeled operational environment by ensuring the test results sufficiently cover all testable security requirements. / Text2: Current Internal And External Security Policies, Standards And Procedures
- 64: This process is used to remove defects from artifacts early in the lifecycle / Text2: [Project Work], Peer Review Meeting Package / Text3: Peer Review Results, Peer Review Meeting Package (Optional) / Text7: HP LoadRunner Training, HP LoadRunner Guides, HP Quality Center Training, HP Quality Center Guides, HP Quick Test Pro Training, HP Quick Test Pro Guides
- 65: To verify system works according to requirements, and to officially accept the system. Customer sign-off takes place during this test. / Text2: Test Plan (optional), Test Information / Text3: Test Information, Test Plan (optional) / Text7: HP LoadRunner Training, HP LoadRunner Guides, HP Quality Center Training, HP Quality Center Guides, HP Quick Test Pro Training, HP Quick Test Pro Guides
- 66: Text1: [Project Work], Peer Review Meeting Package, Peer Review Results, Measurement Definitions, System Security Plan
- 67: The moderator plans for the peer review meeting / Text2: [Project Work] / Text3: Peer Review Meeting Package / Text7: Formal Peer Review Effort Estimation Guideline
- 68: The moderator, author and reviewers prepare for the peer review and the moderator conducts the peer review. / Text2: Peer Review Meeting Package, [Project Work] / Text3: Peer Review Meeting Package / Text7: Conducting Group Reviews, Performing Individual Reviews
- 69: Any rework from defects and action items identified in the peer review meeting are resolved and the measurements are recorded. / Text2: Peer Review Meeting Package, [Project Work] / Text3: Peer Review Results
- 71: Text1: System Wide Requirements Standard, [Technical Specification], Glossary (Optional), System Wide Requirements, Use Case Specification, Requirements Model, Traceability Matrix, Application Security Risk & Requirements, Application Threat Modeling / Text4: Current Internal And External Security Policies, Standards And Procedures , System-Wide Requirements, Use Case Specification, Requirements Model, Acceptable Risks and Safeguards Audit Spreadsheet , Test Information Standard, Test Information
- 72: This task describes how to identify and outline the requirements for the system so that the scope of work may be determined. / Text2: System Wide Requirements Standard, [Customer Requirements], [Technical Specification] / Text3: Glossary (Optional), System Wide Requirements, Use Case Specification, Use Case Survey (Optional), Requirements Model / Text7: Requirements, System-Wide Requirements, Identify and Outline Actors and Use Cases, Developing System-Wide Requirements Specification, Effective Requirement Reviews, Requirements Gathering Techniques, Dimensions RM Training, Dimensions RM Guides
- 73: This task details one or more requirement that does not apply to a specific use case. / Text2: System Wide Requirements Standard, System Wide Requirements, [Customer Requirements], Use Case Specification, Traceability Matrix / Text3: Glossary (Optional), System Wide Requirements, Traceability Matrix / Text7: Effective Requirement Reviews, Developing System-Wide Requirements Specification, Dimensions RM Training, Dimensions RM Guides
- 74: Identify the security risks and requirements and ensure they are documented appropriately. / Text2: Application Security Risk & Requirements, Application Threat Modeling, Current Internal And External Security Policies, Standards And Procedures / Text3: Application Security Risk & Requirements, Application Threat Modeling, System-Wide Requirements, Use Case Specification, Requirements Model, Acceptable Risks and Safeguards Audit Spreadsheet / Text7: Relevant Stakeholders, Security Risk Assessment Procedure, Dimensions RM Training, Dimensions RM Guides
- 75: Develop the test cases and test data for the requirements to be tested. / Text2: Test Information Standard, [Technical Specification], Traceability Matrix, Test Plan (optional), Test Information / Text3: Test Information, Traceability Matrix, Test Plan (optional) / Text7: Test Ideas, HP LoadRunner Training, HP LoadRunner Guides, HP Quality Center Training, HP Quality Center Guides, HP Quick Test Pro Training, HP Quick Test Pro Guides
- 76: Support the assessment of the system implementation against its requirements / Text2: Current Internal And External Security Policies, Standards And Procedures / Text3: [Meeting and Review Records]
- 77: Text1: [Technical Architecture], [Technical Specification], Design, [Software Implementation], [Software Design], Developer Test, Implementation, Test Log, Build, Design Standard, Application Security Risk & Requirements / Text4: Current Internal And External Security Policies, Standards And Procedures , Application Threat Modeling, Current Internal And External Security Policies, Standards And Procedures , Secure C++ Code, Secure Coding, Secure Java Code, System-Wide Requirements
- 78: Identify the elements and devise the interactions, behavior, relations, and data necessary to realize some functionality. Render the design visually to aid in solving the problem and communicating the solution. / Text2: [Technical Architecture], [Technical Specification], Design Standard, Traceability Matrix, Design / Text3: Design, Traceability Matrix / Text7: Architectural Mechanism, Design Mechanism, Implementation Mechanism, Pattern, Design, Requirements Realization, Software Reuse, Entity-Control-Boundary Pattern, Analyze the Design, Evolve the Design, [Design Guidance]
- 79: A process to define and make key project decisions more objectively and wisely. / Text2: DAR Log Standard, APL Compliant Policy / Text3: Decision Log / Text7: Mind Mapping Best Practices, Team Track Training, TeamTrack Guides
- 80: Identify the security risks and requirements and ensure they are documented appropriately. / Text2: Application Security Risk & Requirements, Application Threat Modeling, Current Internal And External Security Policies, Standards And Procedures / Text3: Application Security Risk & Requirements, Application Threat Modeling, System-Wide Requirements, Use Case Specification, Requirements Model, Acceptable Risks and Safeguards Audit Spreadsheet / Text7: Relevant Stakeholders, Security Risk Assessment Procedure, Dimensions RM Training, Dimensions RM Guides
- 81: Implement one or more tests that enable the validation of the individual implementation elements through execution. / Text2: [Software Implementation], Traceability Matrix, [Software Design] / Text3: Developer Test, Traceability Matrix / Text7: Developer Testing, Test Driven Development
- 82: Implement source code to provide new functionality or fix defects. / Text2: [Software Design], [Technical Specification], Traceability Matrix, Developer Test, [Software Implementation] / Text3: Implementation, Traceability Matrix / Text7: Refactoring, Mapping from Design to Code
- 83: Run tests against the individual implementation elements to verify that their internal structures work as specified. / Text2: Developer Test, [Software Implementation] / Text3: Test Log / Text7: Developer Testing, HP LoadRunner Training, HP LoadRunner Guides, HP Quality Center Training, HP Quality Center Guides, HP Quick Test Pro Training, HP Quick Test Pro Guides
- 84: This task describes how to integrate all changes made by developers into the code base and perform the minimal testing to validate the build. / Text2: [Software Implementation], Developer Test, Test Log / Text3: Build, Test Log / Text7: Change Set, Workspace, Promoting Changes, , Software Release Management Gold Disk SOP
- 85: Support the assessment of the system implementation against its requirements and within its modeled operational environment by identifying and eliminating source code vulnerabilities. / Text2: Current Internal And External Security Policies, Standards And Procedures , Secure C++ Code, Secure Coding, Secure Java Code, Secure C# and VB.NET Development
- 86: Support the assessment of the system implementation against its requirements and within its modeled operational environment by ensuring the test results sufficiently cover all testable security requirements. / Text2: Current Internal And External Security Policies, Standards And Procedures
- 87: Verify that system security features are configured, enabled, tested, and verified. / Text2: Application Security Risk & Requirements, Current Internal And External Security Policies, Standards And Procedures / Text3: [Meeting and Review Records]

| ID | WBS | Task | Type | Duration | Start | Finish | Total slack | Constraint | Resources | Work |
| --- | --- | --- | --- | --- | --- | --- | --- | --- | --- | --- |
| 88 | 1.1.1.4.3 | **Test Solution** |  | 62d | 2016-12-01 | 2017-02-28 | 0d |  |  |  |
| 89 | 1.1.1.4.3.1 | Implement Tests (optional) | milestone, manual | 0d | 2016-12-01 | 2017-02-28 |  | start no earlier than 2016-12-01 | Stearns; Douglas R; Tiongson; John Eric Z (NONUS); Palacherla; Susmitha C; Huang; Lili |  |
| 90 | 1.1.1.4.3.2 | Run Tests | milestone, manual | 0d | 2016-12-01 | 2017-02-28 |  | start no earlier than 2016-12-01 | Tester; Team Member |  |
| 91 | 1.1.1.4.3.3 | Evaluate Security Testing | milestone, manual | 0d | 2016-12-01 | 2017-02-28 |  | start no earlier than 2016-12-01 | Project Manager; Stakeholder; Supplier Acquisition Manager; Tester; Huang; Lili; Palacherla; Susmitha C |  |
| 92 | 1.1.1.4.3.4 | Peer Review Selected Work Products | milestone, manual | 0d | 2016-12-01 | 2017-02-28 |  | start no earlier than 2016-12-01 | Augustin; Jourdain M |  |
| 93 | 1.1.1.4.3.5 | Customer Acceptance Testing | milestone, manual | 0d | 2016-12-01 | 2017-02-28 |  | start no earlier than 2016-12-01 | Tiongson; John Eric Z (NONUS); Stearns; Douglas R; Palacherla; Susmitha C; Huang; Lili |  |
| 94 | 1.1.1.4.3.6 | **Formal Peer Review (Optional)** |  | 62d | 2016-12-01 | 2017-02-28 | 0d |  |  |  |
| 95 | 1.1.1.4.3.6.1 | Plan for Formal Peer Reviews (optional) | milestone, manual | 0d | 2016-12-01 | 2017-02-28 |  | start no earlier than 2016-12-01 | Peer Review Moderator; Team Member; Reviewer |  |
| 96 | 1.1.1.4.3.6.2 | Conduct Formal Peer Reviews (optional) | milestone, manual | 0d | 2016-12-01 | 2017-02-28 |  | start no earlier than 2016-12-01 | Peer Review Moderator; Reviewer; Team Member |  |
| 97 | 1.1.1.4.3.6.3 | Follow-up on Formal Peer Review Results (optional) | milestone, manual | 0d | 2016-12-01 | 2017-02-28 |  | start no earlier than 2016-12-01 | Peer Review Moderator; Project Manager; Team Member |  |
| 98 | 1.1.1.5 | **Maintenance Iteration 4** |  | 65d | 2017-03-01 | 2017-05-31 | 0d |  |  | 4160h |
| 99 | 1.1.1.5.1 | **Identify and Refine Requirements** |  | 65d | 2017-03-01 | 2017-05-31 | 0d |  |  | 1040h |
| 100 | 1.1.1.5.1.1 | Identify and Outline Requirements | milestone, manual | 0d | 2017-03-01 | 2017-05-31 |  | start no earlier than 2017-03-01 | Stearns; Douglas R; Tiongson; John Eric Z (NONUS); Huang; Lili; Palacherla; Susmitha C |  |
| 101 | 1.1.1.5.1.2 | Detail System-Wide Requirements | milestone, manual | 0d | 2017-03-01 | 2017-05-31 |  | start no earlier than 2017-03-01 | Stearns; Douglas R; Tiongson; John Eric Z (NONUS); Huang; Lili |  |
| 102 | 1.1.1.5.1.3 | Create, Review/Update Security Requirements | manual | 65d | 2017-03-01 | 2017-05-31 |  | start no earlier than 2017-03-01 | Stearns; Douglas R; Tiongson; John Eric Z (NONUS); Ingram Michael T; Huang; Lili; Szabo; Brian P; Palacherla; Susmitha C | 520h |
| 103 | 1.1.1.5.1.4 | Create Test Cases | milestone, manual | 0d | 2017-03-01 | 2017-05-31 |  | start no earlier than 2017-03-01 | Stearns; Douglas R; Tiongson; John Eric Z (NONUS); Huang; Lili; Palacherla; Susmitha C |  |
| 104 | 1.1.1.5.1.5 | Review Test Activities for Security | manual | 65d | 2017-03-01 | 2017-05-31 |  | start no earlier than 2017-03-01 | Tiongson; John Eric Z (NONUS); Stearns; Douglas R; Ingram Michael T; Szabo; Brian P | 520h |
| 105 | 1.1.1.5.2 | **Develop Solution Increment** |  | 65d | 2017-03-01 | 2017-05-31 | 0d |  |  | 3120h |
| 106 | 1.1.1.5.2.1 | Design the Solution | milestone, manual | 0d | 2017-03-01 | 2017-05-31 |  | start no earlier than 2017-03-01 | Stearns; Douglas R; Tiongson; John Eric Z (NONUS); Palacherla; Susmitha C; Huang; Lili |  |
| 107 | 1.1.1.5.2.2 | Decision Analysis and Resolution | manual | 65d | 2017-03-01 | 2017-05-31 |  | start no earlier than 2017-03-01 | Ingram Michael T; Palacherla; Susmitha C | 520h |
| 108 | 1.1.1.5.2.3 | Create, Review/Update Security Requirements | manual | 65d | 2017-03-01 | 2017-05-31 |  | start no earlier than 2017-03-01 | Stearns; Douglas R; Tiongson; John Eric Z (NONUS); Ingram Michael T; Szabo; Brian P; Huang; Lili; Palacherla; Susmitha C | 520h |
| 109 | 1.1.1.5.2.4 | Create Developer Tests | milestone, manual | 0d | 2017-03-01 | 2017-05-31 |  | start no earlier than 2017-03-01 | Huang; Lili; Palacherla; Susmitha C; Tiongson; John Eric Z (NONUS); Stearns; Douglas R |  |
| 110 | 1.1.1.5.2.5 | Develop Solution | milestone, manual | 0d | 2017-03-01 | 2017-05-31 |  | start no earlier than 2017-03-01 | Huang; Lili; Palacherla; Susmitha C; Tiongson; John Eric Z (NONUS); Stearns; Douglas R |  |
| 111 | 1.1.1.5.2.6 | Run Developer Tests | milestone, manual | 0d | 2017-03-01 | 2017-05-31 |  | start no earlier than 2017-03-01 | Huang; Lili; Palacherla; Susmitha C; Tiongson; John Eric Z (NONUS) |  |
| 112 | 1.1.1.5.2.7 | Integrate and Create Build | manual | 65d | 2017-03-01 | 2017-05-31 |  | start no earlier than 2017-03-01 | Miller; Jackie K; Ingram Michael T; Tiongson; John Eric Z (NONUS); Huang; Lili; Palacherla; Susmitha C | 520h |
| 113 | 1.1.1.5.2.8 | Evaluate Code for Security | manual | 65d | 2017-03-01 | 2017-05-31 |  | start no earlier than 2017-03-01 | Huang; Lili; Palacherla; Susmitha C; Szabo; Brian P; Tiongson; John Eric Z (NONUS); Ingram Michael T | 520h |
| 114 | 1.1.1.5.2.9 | Evaluate Security Testing | manual | 65d | 2017-03-01 | 2017-05-31 |  | start no earlier than 2017-03-01 | Huang; Lili; Palacherla; Susmitha C; Szabo; Brian P; Ingram Michael T; Tiongson; John Eric Z (NONUS); Stearns; Douglas R | 520h |
| 115 | 1.1.1.5.2.10 | Verify Operations Security | manual | 65d | 2017-03-01 | 2017-05-31 |  | start no earlier than 2017-03-01 | Huang; Lili; Palacherla; Susmitha C; Szabo; Brian P; Ingram Michael T; Tiongson; John Eric Z (NONUS); Stearns; Douglas R | 520h |

Notes:
- 88: Text1: Test Information Standard, Test Information, [Software Implementation], Current Internal And External Security Policies, Standards And Procedures , Peer Review Results, Change Request / Problem Report, [Project Work], Peer Review Meeting Package / Text4: Peer Review Meeting Package (Optional), Test Plan (optional), Measurement Definitions, System Security Plan
- 89: Implement Test Scripts to validate a Build of the solution. Organize Test Scripts into suites, and collaborate to ensure appropriate depth and breadth of test feedback. / Text2: Test Information Standard, Test Information, Test Plan (optional), [Software Implementation] / Text3: Test Information, Test Plan (optional) / Text7: Test Ideas, Maintaining Automated Test Suites, Programming Automated Tests, Test Ideas, HP LoadRunner Training, HP LoadRunner Guides, HP Quality Center Training, HP Quality Center Guides, HP Quick Test Pro Training, HP Quick Test Pro Guides
- 90: Run the appropriate tests scripts, analyze results, articulate issues, and communicate test results to the team. / Text2: Test Information Standard, [Software Implementation], Test Information, Test Plan (optional) / Text3: Test Information, Test Plan (optional) / Text7: Maintaining Automated Test Suites, Programming Automated Tests, Test Suite, HP LoadRunner Training, HP LoadRunner Guides, HP Quality Center Training, HP Quality Center Guides, HP Quick Test Pro Training, HP Quick Test Pro Guides
- 91: Support the assessment of the system implementation against its requirements and within its modeled operational environment by ensuring the test results sufficiently cover all testable security requirements. / Text2: Current Internal And External Security Policies, Standards And Procedures
- 92: This process is used to remove defects from artifacts early in the lifecycle / Text2: [Project Work], Peer Review Meeting Package / Text3: Peer Review Results, Peer Review Meeting Package (Optional) / Text7: HP LoadRunner Training, HP LoadRunner Guides, HP Quality Center Training, HP Quality Center Guides, HP Quick Test Pro Training, HP Quick Test Pro Guides
- 93: To verify system works according to requirements, and to officially accept the system. Customer sign-off takes place during this test. / Text2: Test Plan (optional), Test Information / Text3: Test Information, Test Plan (optional) / Text7: HP LoadRunner Training, HP LoadRunner Guides, HP Quality Center Training, HP Quality Center Guides, HP Quick Test Pro Training, HP Quick Test Pro Guides
- 94: Text1: [Project Work], Peer Review Meeting Package, Peer Review Results, Measurement Definitions, System Security Plan
- 95: The moderator plans for the peer review meeting / Text2: [Project Work] / Text3: Peer Review Meeting Package / Text7: Formal Peer Review Effort Estimation Guideline
- 96: The moderator, author and reviewers prepare for the peer review and the moderator conducts the peer review. / Text2: Peer Review Meeting Package, [Project Work] / Text3: Peer Review Meeting Package / Text7: Conducting Group Reviews, Performing Individual Reviews
- 97: Any rework from defects and action items identified in the peer review meeting are resolved and the measurements are recorded. / Text2: Peer Review Meeting Package, [Project Work] / Text3: Peer Review Results
- 99: Text1: System Wide Requirements Standard, [Technical Specification], Glossary (Optional), System Wide Requirements, Use Case Specification, Requirements Model, Traceability Matrix, Application Security Risk & Requirements, Application Threat Modeling / Text4: Current Internal And External Security Policies, Standards And Procedures , System-Wide Requirements, Use Case Specification, Requirements Model, Acceptable Risks and Safeguards Audit Spreadsheet , Test Information Standard, Test Information
- 100: This task describes how to identify and outline the requirements for the system so that the scope of work may be determined. / Text2: System Wide Requirements Standard, [Customer Requirements], [Technical Specification] / Text3: Glossary (Optional), System Wide Requirements, Use Case Specification, Use Case Survey (Optional), Requirements Model / Text7: Requirements, System-Wide Requirements, Identify and Outline Actors and Use Cases, Developing System-Wide Requirements Specification, Effective Requirement Reviews, Requirements Gathering Techniques, Dimensions RM Training, Dimensions RM Guides
- 101: This task details one or more requirement that does not apply to a specific use case. / Text2: System Wide Requirements Standard, System Wide Requirements, [Customer Requirements], Use Case Specification, Traceability Matrix / Text3: Glossary (Optional), System Wide Requirements, Traceability Matrix / Text7: Effective Requirement Reviews, Developing System-Wide Requirements Specification, Dimensions RM Training, Dimensions RM Guides
- 102: Identify the security risks and requirements and ensure they are documented appropriately. / Text2: Application Security Risk & Requirements, Application Threat Modeling, Current Internal And External Security Policies, Standards And Procedures / Text3: Application Security Risk & Requirements, Application Threat Modeling, System-Wide Requirements, Use Case Specification, Requirements Model, Acceptable Risks and Safeguards Audit Spreadsheet / Text7: Relevant Stakeholders, Security Risk Assessment Procedure, Dimensions RM Training, Dimensions RM Guides
- 103: Develop the test cases and test data for the requirements to be tested. / Text2: Test Information Standard, [Technical Specification], Traceability Matrix, Test Plan (optional), Test Information / Text3: Test Information, Traceability Matrix, Test Plan (optional) / Text7: Test Ideas, HP LoadRunner Training, HP LoadRunner Guides, HP Quality Center Training, HP Quality Center Guides, HP Quick Test Pro Training, HP Quick Test Pro Guides
- 104: Support the assessment of the system implementation against its requirements / Text2: Current Internal And External Security Policies, Standards And Procedures / Text3: [Meeting and Review Records]
- 105: Text1: [Technical Architecture], [Technical Specification], Design, [Software Implementation], [Software Design], Developer Test, Implementation, Test Log, Build, Design Standard, Application Security Risk & Requirements / Text4: Current Internal And External Security Policies, Standards And Procedures , Application Threat Modeling, Current Internal And External Security Policies, Standards And Procedures , Secure C++ Code, Secure Coding, Secure Java Code, System-Wide Requirements
- 106: Identify the elements and devise the interactions, behavior, relations, and data necessary to realize some functionality. Render the design visually to aid in solving the problem and communicating the solution. / Text2: [Technical Architecture], [Technical Specification], Design Standard, Traceability Matrix, Design / Text3: Design, Traceability Matrix / Text7: Architectural Mechanism, Design Mechanism, Implementation Mechanism, Pattern, Design, Requirements Realization, Software Reuse, Entity-Control-Boundary Pattern, Analyze the Design, Evolve the Design, [Design Guidance]
- 107: A process to define and make key project decisions more objectively and wisely. / Text2: DAR Log Standard, APL Compliant Policy / Text3: Decision Log / Text7: Mind Mapping Best Practices, Team Track Training, TeamTrack Guides
- 108: Identify the security risks and requirements and ensure they are documented appropriately. / Text2: Application Security Risk & Requirements, Application Threat Modeling, Current Internal And External Security Policies, Standards And Procedures / Text3: Application Security Risk & Requirements, Application Threat Modeling, System-Wide Requirements, Use Case Specification, Requirements Model, Acceptable Risks and Safeguards Audit Spreadsheet / Text7: Relevant Stakeholders, Security Risk Assessment Procedure, Dimensions RM Training, Dimensions RM Guides
- 109: Implement one or more tests that enable the validation of the individual implementation elements through execution. / Text2: [Software Implementation], Traceability Matrix, [Software Design] / Text3: Developer Test, Traceability Matrix / Text7: Developer Testing, Test Driven Development
- 110: Implement source code to provide new functionality or fix defects. / Text2: [Software Design], [Technical Specification], Traceability Matrix, Developer Test, [Software Implementation] / Text3: Implementation, Traceability Matrix / Text7: Refactoring, Mapping from Design to Code
- 111: Run tests against the individual implementation elements to verify that their internal structures work as specified. / Text2: Developer Test, [Software Implementation] / Text3: Test Log / Text7: Developer Testing, HP LoadRunner Training, HP LoadRunner Guides, HP Quality Center Training, HP Quality Center Guides, HP Quick Test Pro Training, HP Quick Test Pro Guides
- 112: This task describes how to integrate all changes made by developers into the code base and perform the minimal testing to validate the build. / Text2: [Software Implementation], Developer Test, Test Log / Text3: Build, Test Log / Text7: Change Set, Workspace, Promoting Changes, , Software Release Management Gold Disk SOP
- 113: Support the assessment of the system implementation against its requirements and within its modeled operational environment by identifying and eliminating source code vulnerabilities. / Text2: Current Internal And External Security Policies, Standards And Procedures , Secure C++ Code, Secure Coding, Secure Java Code, Secure C# and VB.NET Development
- 114: Support the assessment of the system implementation against its requirements and within its modeled operational environment by ensuring the test results sufficiently cover all testable security requirements. / Text2: Current Internal And External Security Policies, Standards And Procedures
- 115: Verify that system security features are configured, enabled, tested, and verified. / Text2: Application Security Risk & Requirements, Current Internal And External Security Policies, Standards And Procedures / Text3: [Meeting and Review Records]

| ID | WBS | Task | Type | Duration | Start | Finish | Predecessors | Total slack | Free slack | Constraint | Resources | Work | Text3 |
| --- | --- | --- | --- | --- | --- | --- | --- | --- | --- | --- | --- | --- | --- |
| 116 | 1.1.1.5.3 | **Test Solution** |  | 65d | 2017-03-01 | 2017-05-31 |  | 0d |  |  |  |  |  |
| 117 | 1.1.1.5.3.1 | Implement Tests (optional) | milestone, manual | 0d | 2017-03-01 | 2017-05-31 |  |  |  | start no earlier than 2017-03-01 | Stearns; Douglas R; Tiongson; John Eric Z (NONUS); Palacherla; Susmitha C; Huang; Lili |  | Test Information, Test Plan (optional) |
| 118 | 1.1.1.5.3.2 | Run Tests | milestone, manual | 0d | 2017-03-01 | 2017-05-31 |  |  |  | start no earlier than 2017-03-01 | Tester; Team Member |  | Test Information, Test Plan (optional) |
| 119 | 1.1.1.5.3.3 | Evaluate Security Testing | milestone, manual | 0d | 2017-03-01 | 2017-05-31 |  |  |  | start no earlier than 2017-03-01 | Project Manager; Stakeholder; Supplier Acquisition Manager; Tester; Huang; Lili; Palacherla; Susmitha C |  |  |
| 120 | 1.1.1.5.3.4 | Peer Review Selected Work Products | milestone, manual | 0d | 2017-03-01 | 2017-05-31 |  |  |  | start no earlier than 2017-03-01 | Augustin; Jourdain M |  | Peer Review Results, Peer Review Meeting Package (Optional) |
| 121 | 1.1.1.5.3.5 | Customer Acceptance Testing | milestone, manual | 0d | 2017-03-01 | 2017-05-31 |  |  |  | start no earlier than 2017-03-01 | Tiongson; John Eric Z (NONUS); Stearns; Douglas R; Palacherla; Susmitha C; Huang; Lili |  | Test Information, Test Plan (optional) |
| 122 | 1.1.1.5.3.6 | **Formal Peer Review (Optional)** |  | 65d | 2017-03-01 | 2017-05-31 |  | 0d |  |  |  |  |  |
| 123 | 1.1.1.5.3.6.1 | Plan for Formal Peer Reviews (optional) | milestone, manual | 0d | 2017-03-01 | 2017-05-31 |  |  |  | start no earlier than 2017-03-01 | Peer Review Moderator; Team Member; Reviewer |  | Peer Review Meeting Package |
| 124 | 1.1.1.5.3.6.2 | Conduct Formal Peer Reviews (optional) | milestone, manual | 0d | 2017-03-01 | 2017-05-31 |  |  |  | start no earlier than 2017-03-01 | Peer Review Moderator; Reviewer; Team Member |  | Peer Review Meeting Package |
| 125 | 1.1.1.5.3.6.3 | Follow-up on Formal Peer Review Results (optional) | milestone, manual | 0d | 2017-03-01 | 2017-05-31 |  |  |  | start no earlier than 2017-03-01 | Peer Review Moderator; Project Manager; Team Member |  | Peer Review Results |
| 126 | 1.1.1.6 | **Assess Results** |  | 256d? | 2016-06-01 | 2017-06-02 |  | 6d |  |  |  | 2056h |  |
| 127 | 1.1.1.6.1 | Complete measurement spreadsheet |  | 254d? | 2016-06-01 | 2017-05-31 |  | 6d | 0d | finish no earlier than 2017-05-31 | Ingram Michael T | 2032h |  |
| 128 | 1.1.1.6.2 | Communicate to stakeholders |  | 2d? | 2017-06-01 | 2017-06-02 | 127 | 6d |  |  | Haltmeyer; Jacqueline K; Ingram Michael T; Tiongson; John Eric Z (NONUS) | 24h |  |
| 129 | 1.1.1.7 | **Manage Configurations** |  | 262d | 2016-06-01 | 2017-06-12 |  |  |  |  |  | 18384h |  |
| 130 | 1.1.1.7.1 | Perform Change Management |  | 254d | 2016-06-01 | 2017-05-31 |  | 8d |  | finish no earlier than 2017-05-31 | Team Member; Configuration Management Lead; Configuration Control Board | 6096h | Change Request / Problem Report |
| 131 | 1.1.1.7.2 | Create and Verify Baseline |  | 254d | 2016-06-01 | 2017-05-31 |  | 8d |  | finish no earlier than 2017-05-31 | Configuration Management Lead; Configuration Control Board | 4064h | Baseline Package, Baseline Audit Plan & Report |
| 132 | 1.1.1.7.3 | Decision Analysis and Resolution |  | 254d | 2016-06-01 | 2017-05-31 |  | 8d |  | finish no earlier than 2017-05-31 | Project Manager; Team Member | 4064h | Decision Log |
| 133 | 1.1.1.7.4 | **Monthly patches** |  | 239.12d | 2016-06-01 | 2017-05-10 |  |  |  |  |  | 2080h |  |
| 134 | 1.1.1.7.4.1 | June Patching QA / Prod | manual | 176h | 2016-06-01 | 2016-06-30 |  |  |  |  | Huang; Lili | 176h |  |
| 135 | 1.1.1.7.4.2 | July Patching QA / Prod | manual | 168h | 2016-07-01 | 2016-07-31 |  |  |  |  | Huang; Lili | 168h |  |
| 136 | 1.1.1.7.4.3 | August Patching QA / Prod | manual | 184h | 2016-08-01 | 2016-08-31 |  |  |  |  | Huang; Lili | 184h |  |
| 137 | 1.1.1.7.4.4 | Sept Patching QA / Prod | manual | 168h | 2016-09-01 | 2016-09-30 |  |  |  |  | Huang; Lili | 168h |  |
| 138 | 1.1.1.7.4.5 | Oct Patching QA / Prod | manual | 176h | 2016-10-01 | 2016-10-31 |  |  |  |  | Huang; Lili | 176h |  |
| 139 | 1.1.1.7.4.6 | Nov Patching QA / Prod | manual | 160h | 2016-11-01 | 2016-11-30 |  |  |  |  | Huang; Lili | 160h |  |
| 140 | 1.1.1.7.4.7 | Dec Patching QA / Prod | manual | 176h | 2016-12-01 | 2016-12-31 |  |  |  |  | Huang; Lili | 176h |  |
| 141 | 1.1.1.7.4.8 | Jan Patching QA / Prod | manual | 176h | 2017-01-01 | 2017-01-31 |  |  |  |  | Huang; Lili | 176h |  |
| 142 | 1.1.1.7.4.9 | Feb Patching QA / Prod | manual | 160h | 2017-02-01 | 2017-02-28 |  |  |  |  | Huang; Lili | 160h |  |
| 143 | 1.1.1.7.4.10 | March Patching QA / Prod | manual | 184h | 2017-03-01 | 2017-03-31 |  |  |  |  | Huang; Lili | 184h |  |
| 144 | 1.1.1.7.4.11 | April Patching QA / Prod | manual | 176h | 2017-04-01 | 2017-04-30 |  |  |  |  | Huang; Lili | 176h |  |
| 145 | 1.1.1.7.4.12 | May Patching QA / Prod | manual | 176h | 2017-05-01 | 2017-05-31 |  |  |  |  | Huang; Lili | 176h |  |

Notes:
- 116: Text1: Test Information Standard, Test Information, [Software Implementation], Current Internal And External Security Policies, Standards And Procedures , Peer Review Results, Change Request / Problem Report, [Project Work], Peer Review Meeting Package / Text4: Peer Review Meeting Package (Optional), Test Plan (optional), Measurement Definitions, System Security Plan
- 117: Implement Test Scripts to validate a Build of the solution. Organize Test Scripts into suites, and collaborate to ensure appropriate depth and breadth of test feedback. / Text2: Test Information Standard, Test Information, Test Plan (optional), [Software Implementation] / Text7: Test Ideas, Maintaining Automated Test Suites, Programming Automated Tests, Test Ideas, HP LoadRunner Training, HP LoadRunner Guides, HP Quality Center Training, HP Quality Center Guides, HP Quick Test Pro Training, HP Quick Test Pro Guides
- 118: Run the appropriate tests scripts, analyze results, articulate issues, and communicate test results to the team. / Text2: Test Information Standard, [Software Implementation], Test Information, Test Plan (optional) / Text7: Maintaining Automated Test Suites, Programming Automated Tests, Test Suite, HP LoadRunner Training, HP LoadRunner Guides, HP Quality Center Training, HP Quality Center Guides, HP Quick Test Pro Training, HP Quick Test Pro Guides
- 119: Support the assessment of the system implementation against its requirements and within its modeled operational environment by ensuring the test results sufficiently cover all testable security requirements. / Text2: Current Internal And External Security Policies, Standards And Procedures
- 120: This process is used to remove defects from artifacts early in the lifecycle / Text2: [Project Work], Peer Review Meeting Package / Text7: HP LoadRunner Training, HP LoadRunner Guides, HP Quality Center Training, HP Quality Center Guides, HP Quick Test Pro Training, HP Quick Test Pro Guides
- 121: To verify system works according to requirements, and to officially accept the system. Customer sign-off takes place during this test. / Text2: Test Plan (optional), Test Information / Text7: HP LoadRunner Training, HP LoadRunner Guides, HP Quality Center Training, HP Quality Center Guides, HP Quick Test Pro Training, HP Quick Test Pro Guides
- 122: Text1: [Project Work], Peer Review Meeting Package, Peer Review Results, Measurement Definitions, System Security Plan
- 123: The moderator plans for the peer review meeting / Text2: [Project Work] / Text7: Formal Peer Review Effort Estimation Guideline
- 124: The moderator, author and reviewers prepare for the peer review and the moderator conducts the peer review. / Text2: Peer Review Meeting Package, [Project Work] / Text7: Conducting Group Reviews, Performing Individual Reviews
- 125: Any rework from defects and action items identified in the peer review meeting are resolved and the measurements are recorded. / Text2: Peer Review Meeting Package, [Project Work]
- 129: Text1: Configuration Control Standard, Baseline Package Standard, Change Request / Problem Report, Baseline Package, Project Plan, [Measurements], [Meeting and Review Records], Risk Register, Work Items List, Impact Assessment Standard, DAR Log Standard / Text4: Decision Log, Baseline Audit Plan & Report, APL Compliant Policy, Measurement Definitions, System Security Plan
- 130: Text2: Configuration Control Standard, Impact Assessment Standard, Change Request / Problem Report / Text7: Subversion Training, Subversion Guides, Team Track Training, TeamTrack Guides, Tracker Training, Tracker Guides, Version Manager Training, Version Manager Guides
- 131: Text2: Baseline Package Standard / Text7: Subversion Training, Subversion Guides, Team Track Training, TeamTrack Guides, Tracker Training, Tracker Guides, Version Manager Training, Version Manager Guides
- 132: A process to define and make key project decisions more objectively and wisely. / Text2: DAR Log Standard, APL Compliant Policy / Text7: Mind Mapping Best Practices, Team Track Training, TeamTrack Guides

| ID | WBS | Task | Type | Duration | Start | Finish | Resources | Work |
| --- | --- | --- | --- | --- | --- | --- | --- | --- |
| 146 | 1.1.1.7.5 | **Monthly Password Changes** |  | 239.12d | 2016-06-01 | 2017-05-10 |  | 2080h |
| 147 | 1.1.1.7.5.1 | June QA / Prod PW | manual | 176h | 2016-06-01 | 2016-06-30 | Palacherla; Susmitha C | 176h |
| 148 | 1.1.1.7.5.2 | July QA / Prod PW | manual | 168h | 2016-07-01 | 2016-07-31 | Palacherla; Susmitha C | 168h |
| 149 | 1.1.1.7.5.3 | Aug QA / Prod PW | manual | 184h | 2016-08-01 | 2016-08-31 | Palacherla; Susmitha C | 184h |
| 150 | 1.1.1.7.5.4 | Sept QA / Prod PW | manual | 168h | 2016-09-01 | 2016-09-30 | Palacherla; Susmitha C | 168h |
| 151 | 1.1.1.7.5.5 | Oct QA / Prod PW | manual | 176h | 2016-10-01 | 2016-10-31 | Palacherla; Susmitha C | 176h |
| 152 | 1.1.1.7.5.6 | Nov QA / Prod PW | manual | 160h | 2016-11-01 | 2016-11-30 | Palacherla; Susmitha C | 160h |
| 153 | 1.1.1.7.5.7 | Dec QA / Prod PW | manual | 176h | 2016-12-01 | 2016-12-31 | Palacherla; Susmitha C | 176h |
| 154 | 1.1.1.7.5.8 | Jan QA / Prod PW | manual | 176h | 2017-01-01 | 2017-01-31 | Palacherla; Susmitha C | 176h |
| 155 | 1.1.1.7.5.9 | Feb QA / Prod PW | manual | 160h | 2017-02-01 | 2017-02-28 | Palacherla; Susmitha C | 160h |
| 156 | 1.1.1.7.5.10 | March QA / Prod PW | manual | 184h | 2017-03-01 | 2017-03-31 | Palacherla; Susmitha C | 184h |
| 157 | 1.1.1.7.5.11 | April QA / Prod PW | manual | 176h | 2017-04-01 | 2017-04-30 | Palacherla; Susmitha C | 176h |
| 158 | 1.1.1.7.5.12 | May QA / Prod PW | manual | 176h | 2017-05-01 | 2017-05-31 | Palacherla; Susmitha C | 176h |
